# Advanced Analytics Project

Schedule from MS Project, 2017-08-16 to 2017-09-18.
Project Plan for Data Science and AI Projects
Microsoft
To be used as a template - dates are not accurate.

## Calendars

- Standard: Mon-Fri 08:00-12:00, 13:00-17:00; Sat-Sun off.

## Resources

| Resource |
| --- |
| Business |
| IT Director |
| Data Engineer |
| Data Scientist |
| Front End Developer |
| Visualization |
| Tester |
| DevOps |

## Schedule

| ID | WBS | Task | Type | Duration | Start | Finish | Predecessors | Total slack | Resources | Work |
| --- | --- | --- | --- | --- | --- | --- | --- | --- | --- | --- |
| 1 | 1 | Project Kickoff |  | 1d? | 2017-08-16 | 2017-08-16 |  | 0d | Business; Data Scientist; DevOps | 24h |
| 2 | 2 | **Business Understanding** |  | 8d? | 2017-08-17 | 2017-08-28 | 1 | 0d | Business; Data Scientist | 456h |
| 3 | 2.1 | Define Objectives |  | 1d? | 2017-08-17 | 2017-08-17 | 1 | 0d | Business | 8h |
| 4 | 2.2 | Identify the key business variables |  | 1d? | 2017-08-18 | 2017-08-18 | 3 | 21d | Business; Data Scientist; Data Engineer | 24h |
| 5 | 2.3 | Define Project Goals |  | 1d? | 2017-08-18 | 2017-08-18 | 3 | 21d | Business; Data Scientist; IT Director | 24h |
| 6 | 2.4 | Define project team |  | 1d? | 2017-08-18 | 2017-08-18 | 3 | 0d | IT Director | 8h |
| 7 | 2.5 | Define success metrics |  | 1d? | 2017-08-21 | 2017-08-21 | 6 | 0d | IT Director; Business; Data Scientist | 24h |
| 8 | 2.6 | Identify Data Sources |  | 5d? | 2017-08-22 | 2017-08-28 | 7 | 0d | Business; Data Engineer; Data Scientist; DevOps; Visualization; IT Director | 240h |
| 9 | 2.7 | Data Sources Documented | milestone | 0d | 2017-08-28 | 2017-08-28 | 8 | 0d | Data Engineer; Data Scientist; DevOps |  |
| 10 | 2.8 | Data Dictionaries Delivered | milestone | 0d | 2017-08-28 | 2017-08-28 | 9 | 0d | Data Engineer; Data Scientist; DevOps |  |
| 11 | 2.9 | Charter Document Delivered | milestone | 0d | 2017-08-28 | 2017-08-28 | 10 | 0d | Data Scientist; Data Engineer; DevOps; IT Director |  |
| 12 | 3 | **Data Acquisition and Understanding** |  | 7d? | 2017-08-29 | 2017-09-06 | 11 | 0d |  | 136h |
| 13 | 3.1 | Ingest the data |  | 3d? | 2017-08-29 | 2017-08-31 | 11 | 0d | Data Engineer | 24h |
| 14 | 3.2 | Explore the data |  | 3d? | 2017-09-01 | 2017-09-05 | 13 | 0d | Data Engineer; Data Scientist; Front End Developer; Visualization | 96h |
| 15 | 3.3 | Set up data pipeline |  | 1d? | 2017-09-06 | 2017-09-06 | 14 | 8d | Data Engineer; DevOps | 16h |
| 16 | 3.4 | Deliver Data Quality Report | milestone | 0d | 2017-09-05 | 2017-09-05 | 14 | 0d | Data Engineer; Data Scientist; DevOps |  |
| 17 | 3.5 | Deliver a Solution Architecture | milestone | 0d | 2017-09-05 | 2017-09-05 | 16 | 0d | Data Scientist; DevOps |  |
| 18 | 3.6 | Checkpoint Decision | milestone | 0d | 2017-09-05 | 2017-09-05 | 17 | 0d | Data Scientist; Business |  |
| 19 | 4 | **Modeling** |  | 6d? | 2017-09-06 | 2017-09-13 | 17 | 0d |  | 72h |
| 20 | 4.1 | Feature Engineering |  | 1d? | 2017-09-06 | 2017-09-06 | 18 | 0d | Data Engineer; Data Scientist | 16h |
| 21 | 4.2 | Train Model |  | 1d? | 2017-09-07 | 2017-09-07 | 20 | 0d | Data Scientist | 8h |
| 22 | 4.3 | Evaluate Model |  | 1d? | 2017-09-08 | 2017-09-08 | 21 | 0d | Data Scientist | 8h |
| 23 | 4.4 | Define Feature Sets |  | 1d? | 2017-09-11 | 2017-09-11 | 22 | 0d | Data Scientist | 8h |
| 24 | 4.5 | Create Model Report |  | 1d? | 2017-09-12 | 2017-09-12 | 23 | 0d | Data Scientist | 8h |
| 25 | 4.6 | Checkpoint Decision |  | 1d? | 2017-09-13 | 2017-09-13 | 24 | 0d | Data Scientist; IT Director; Business | 24h |

Notes:
- 1: The Team Data Science Process (TDSP) provides a recommended lifecycle that you can use to structure the development of your data science projects. The lifecycle outlines the steps, from start to finish, that projects usually follow when they are executed. If you are using another data science lifecycle, such as CRISP-DM, KDD or your organization's own custom process, you can still use the task-based TDSP in the context of those development lifecycles. / This lifecycle has been designed for data science projects that are intended to ship as part of intelligent applications. These applications deploy machine learning or artificial intelligence models for predictive analytics. Exploratory data science projects and ad hoc or on-off analytics projects can also benefit from using this process, but in such cases some steps described may not be needed. / (Complete documentation here: https://github.com/Azure/Azure-TDSP-ProjectTemplate)
- 2: Goals / ⦁The key variables are specified that are to serve as the model targets and whose related metrics are used determine the success for the project. / ⦁The relevant data sources are identified that the business has access to or needs to obtain. / How to do it / There are two main tasks addressed in this stage: / ⦁Define Objectives: Work with your customer and other stakeholders to understand and identify the business problems. Formulate questions that define the business goals and that data science techniques can target. / ⦁Identify data sources: Find the relevant data that helps you answer the questions that define the objectives of the project.
- 3: Work with your customer and other stakeholders to understand and identify the business problems. Formulate questions that define the business goals and that data science techniques can target.
- 4: A central objective of this step is to identify the key business variables that the analysis needs to predict. These variables are referred to as the model targets and the metrics associated with them are used to determine the success of the project. Two examples of such targets are sales forecast or the probability of an order being fraudulent.
- 5: Define the project goals by asking and refining "sharp" questions that are relevant and specific and unambiguous. Data science is the process of using names and numbers to answer such questions. / For additional guidance on asking sharp questions, see How to do Data Science blog. Data science / machine learning is typically used to answer five types of questions: / ·How much or how many? (regression) / ·Which category? (classification) / ·Which group? (clustering) / ·Is this weird? (anomaly detection) / ·Which option should be taken? (recommendation) / Determine which of these questions you are asking and how answering it achieves your business goals.
- 6: Define the project team by specifying the roles and responsibilities of its members. Develop a high-level milestone plan that you iterate on as more information is discovered.
- 7: Define success metrics. For example: Achieve customer churn prediction accuracy of X% by the end of this 3-month project, so that we can offer promotions to reduce churn. The metrics must be SMART: / ·Specific / ·Measurable / ·Achievable / ·Relevant / ·Time-bound
- 8: Identify data sources that contain known examples of answers to your sharp questions. Look for the following data: / ·Data that is Relevant to the question. Do we have measures of the target and features that are related to the target? / ·Data that is an Accurate measure of our model target and the features of interest. / It is not uncommon, for example, to find that existing systems need to collect and log additional kinds of data to address the problem and achieve the project goals. In this case, you may want to look for external data sources or update your systems to collect new data.
- 9: This is the Raw Data Sources section of the Data Definitions report that is found in the TDSP project Data Report folder here: https://github.com/Azure/Azure-TDSP-ProjectTemplate/blob/master/Docs/DataReport/Data%20Defintion.md#raw-data-sources. It specifies the original and destination locations for the raw data. In later stages, you fill in additional details like scripts to move the data to your analytic environment. The Azure Data Catalog is a useful place to store this information.
- 10: This document provides descriptions of the data that is provided by the client. These descriptions include information about the schema (data types, information on validation rules, if any) and the entity-relation diagrams if available. The Azure Data Catalog is a useful place to store this information.
- 11: A standard template is provided here: https://github.com/Azure/Azure-TDSP-ProjectTemplate/blob/master/Docs/Project/Charter.md. / This is a living document that is updated throughout the project as new discoveries are made and as business requirements change. The key is to iterate upon this document, adding more detail, as you progress through the discovery process. Keep the customer and other stakeholders involved in making the changes and clearly communicate the reasons for the changes to them.
- 12: Goals: / A clean, high-quality dataset whose relations to the target variables are understood that are located in the appropriate analytics environment, ready to model. / A solution architecture of the data pipeline to refresh and score data regularly has been developed.
- 13: Set up the process to move the data from source locations to the target locations where analytics operations like training and predictions are to be executed.
- 14: Before you train your models, you need to develop a sound understanding of the data. Real-world datasets are often noisy or are missing values or have a host of other discrepancies. Data summarization and visualization can be used to audit the quality of your data and provide the information needed to process the data before it is ready for modeling. This process is often iterative. / TDSP provides an automated utility called IDEAR (https://github.com/Azure/Azure-TDSP-Utilities/blob/master/DataScienceUtilities/DataReport-Utils) to help visualize the data and prepare data summary reports. We recommend starting with IDEAR first to explore the data to help develop initial data understanding interactively with no coding and then write custom code for data exploration and visualization. For guidance on cleaning the data, see Tasks to prepare data for enhanced machine learning: https://docs.microsoft.com/en-us/azure/machine-learning/machine-learning-data-science-prepare-data / Once you are satisfied with the quality of the cleansed data, the next step is to better understand the patterns that are inherent in the data that help you choose and develop an appropriate predictive model for your target. Look for evidence for how well connected the data is to the target and whether there is sufficient data to move forward with the next modeling steps. Again, this process is often iterative. You may need to find new data sources with more accurate or more relevant data to augment the dataset initially identified in the previous stage.
- 15: In addition to the initial ingestion and cleaning of the data, you typically need to set up a process to score new data or refresh the data regularly as part of an ongoing learning process. This can be done by setting up a data pipeline or workflow. / A solution architecture of the data pipeline is developed in this stage. The pipeline is also developed in parallel with the following stages of the data science project. The pipeline may be batch-based or streaming/real-time or a hybrid depending on your business needs and the constraints of your existing systems into which this solution is being integrated.
- 16: This report contains data summaries, relationships between each attribute and target, variable ranking etc. The IDEAR tool provided as part of TDSP can quickly generate this report on any tabular dataset such as a CSV file or a relational table: https://github.com/Azure/Azure-TDSP-ProjectTemplate/blob/master/Docs/DataReport/DataSummaryReport.md
- 17: This can be a diagram or description of your data pipeline used to run scoring or predictions on new data once you have built a model. It also contains the pipeline to retrain your model based on new data. The document is stored in the Project directory when using the TDSP directory structure template.
- 18: Before you begin full feature engineering and model building, you can reevaluate the project to determine whether the value expected is sufficient to continue pursing it. You may, for example, be ready to proceed, need to collect more data, or abandon the project as the data does not exist to answer the question.
- 19: Goals: / ·Optimal data features for the machine learning model. / ·An informative ML model that predicts the target most accurately. / ·An ML model that is suitable for production.
- 20: Feature engineering involves inclusion, aggregation and transformation of raw variables to create the features used in the analysis. If you want insight into what is driving a model, then you need to understand how features are related to each other and how the machine learning algorithms are to use those features. This step requires a creative combination of domain expertise and insights obtained from the data exploration step. This is a balancing act of finding and including informative variables while avoiding too many unrelated variables. Informative variables improve our result; unrelated variables introduce unnecessary noise into the model. You also need to generate these features for any new data obtained during scoring. So the generation of these features can only depend on data that is available at the time of scoring.
- 21: Depending on type of question you are trying answer, there are many modeling algorithms available. The process for model training includes the following steps: / ·Split the input data randomly for modeling into a training data set and a test data set. / ·Build the models using the training data set. / ·Evaluate (training and test dataset) a series of competing machine learning algorithms along with the various associated tuning parameters (known as parameter sweep) that are geared toward answering the question of interest with the current data. / ·Determine the best solution to answer the question by comparing the success metric between alternative methods. / Note / Avoid leakage: Data leakage can be caused by the inclusion of data from outside the training dataset that allows a model or machine learning algorithm to make unrealistically good predictions. Leakage is a common reason why data scientists get nervous when they get predictive results that seem too good to be true. These dependencies can be hard to detect. To avoid this often requires iterating between building an analysis data set, creating a model, and evaluating the accuracy. / Microsoft provides an Automated Modeling and Reporting tool with TDSP that is able to run through multiple algorithms and parameter sweeps to produce a baseline model. It also produces a baseline modeling report summarizing performance of each model and parameter combination including variable importance. This process is also iterative as it can drive further feature engineering.
- 22: Evaluate (training and test dataset) a series of competing machine learning algorithms along with the various associated tuning parameters (known as parameter sweep) that are geared toward answering the question of interest with the current data
- 23: The features developed for the modeling are described in the Feature Sets section of the Data Definition report. It contains pointers to the code to generate the features and description on how the feature was generated. / https://github.com/Azure/Azure-TDSP-ProjectTemplate/blob/master/Docs/DataReport/Data%20Defintion.md#feature-sets
- 24: For each model that is tried, a standard, template-based report that provides details on each experiment is produced. / https://github.com/Azure/Azure-TDSP-ProjectTemplate/blob/master/Docs/Model/Model%201/Model%20Report.md
- 25: Evaluate whether the model is performing well enough to deploy it to a production system. Some key questions to ask are: / Does the model answer the question with sufficient confidence given the test data? / Should try any alternative approaches: collect additional data, do more feature engineering, or experiment with other algorithms?

| ID | WBS | Task | Type | Duration | Start | Finish | Predecessors | Total slack | Resources | Work |
| --- | --- | --- | --- | --- | --- | --- | --- | --- | --- | --- |
| 26 | 5 | **Deployment** |  | 1d? | 2017-09-14 | 2017-09-14 | 25 | 0d | Data Engineer; Data Scientist; DevOps; Front End Developer; Tester; Visualization | 96h |
| 27 | 5.1 | Operationalize the Model |  | 1d? | 2017-09-14 | 2017-09-14 | 25 | 0d | DevOps; Data Engineer; Data Scientist; Front End Developer; Tester; Visualization | 48h |
| 28 | 5.2 | Deliver status dashboard | milestone | 0d | 2017-09-14 | 2017-09-14 | 27 | 0d | Visualization; DevOps; Data Scientist |  |
| 29 | 5.3 | Deliver final modeling report | milestone | 0d | 2017-09-14 | 2017-09-14 | 28 | 0d | Data Scientist; DevOps; IT Director |  |
| 30 | 5.4 | Deliver Final solution architecture document | milestone | 0d | 2017-09-14 | 2017-09-14 | 29 | 0d | Data Scientist; DevOps |  |
| 31 | 6 | **Customer Handoff** |  | 2d? | 2017-09-15 | 2017-09-18 | 30 | 0d |  | 40h |
| 32 | 6.1 | System Validation |  | 1d? | 2017-09-15 | 2017-09-15 | 30 | 0d | IT Director; Data Scientist; Tester; DevOps | 32h |
| 33 | 6.2 | Project Handoff |  | 1d? | 2017-09-18 | 2017-09-18 | 32 | 0d | IT Director | 8h |
| 34 | 6.3 | Project Close-out: Exit Report of Project for Customer | milestone | 0d? | 2017-09-18 | 2017-09-18 | 33 | 0d |  |  |

Notes:
- 26: Models with a data pipeline are deployed to a production or production-like environment for final user acceptance.
- 27: Once you have a set of models that perform well, they can be operationalized for other applications to consume. Depending on the business requirements, predictions are made either in real-time or on a batch basis. To be operationalized, the models have to be exposed with an open API interface that is easily consumed from various applications such as online websites, spreadsheets, dashboards, or line of business and backend applications. It is also a best practice to build telemetry and monitoring into the production model and the data pipeline deployed to help with subsequent system status reporting and troubleshooting.
- 28: Create a status dashboard of system health and key metrics
- 29: Create a final modeling report with deployment details.
- 30: Create a final solution architecture document.
- 31: Goal: Finalize the project deliverables: confirm that the pipeline, the model, and their deployment in a production environment are satisfying customer objectives.
- 32: The customer should validate that the system meets their business needs and the answers the questions with acceptable accuracy to deploy the system to production for use by their client application. All the documentation is finalized and reviewed.
- 33: A hand-off of the project to the entity responsible for operations is completed. This could be, for example, an IT or customer data science team or an agent of the customer that is responsible for running the system in production.
- 34: The main artifact produced in this final stage is the Exit Report of Project for Customer. This is the technical report containing all details of the project that useful to learn about and operate the system. An Exit Report template is provided by TDSP that can be used as is or customized for specific client needs: https://github.com/Azure/Azure-TDSP-ProjectTemplate/blob/master/Docs/Project/Exit%20Report.md
